# medicare

Schedule from MS Project, 2023-10-23 to 2024-01-20, costs in €, A marks actual dates.

## Calendars

- Standard: Mon-Fri 09:00-13:00, 14:00-18:00; Sat-Sun off.

## Resources

| Resource | Rate | Cost per use |
| --- | --- | --- |
| Matteo Avella | 50 | 50 |
| Salvatore Basilicata | 50 | 50 |
| Primo Vinicio Calabrese | 50 | 50 |
| Gianluca Palumbo | 50 | 50 |
| Giovanni Casaburi | 50 | 50 |
| Domenico Alessandro Urciuoli | 50 | 50 |

## Schedule

| ID | WBS | Task | Type | Duration | Start | Finish | Predecessors | Complete | Baseline finish | Work | Actual work | Cost | Baseline cost | Actual cost |
| --- | --- | --- | --- | --- | --- | --- | --- | --- | --- | --- | --- | --- | --- | --- |
| 1 | 0 | **MediCare** |  | 66d | 2023-10-23 A | 2024-01-20 A |  | 100% | 2023-11-27 | 294h | 294h | 87,900 | 90,000 | 87,900 |
| 2 | 0.1 | **Utilities** |  | 1d | 2023-10-23 A | 2023-10-23 A |  | 100% | 2023-10-23 | 1h | 1h | 300 | 300 | 300 |
| 3 | 0.1.1 | Logo e Palette | manual | 0.12d | 2023-10-23 A | 2023-10-23 A |  | 100% | 2023-10-23 | 1h | 1h | 300 | 300 | 300 |
| 4 | 1 | **RAD** |  | 26d | 2023-10-23 A | 2023-11-27 A |  | 100% | 2023-11-27 | 47h | 47h | 13,800 | 12,600 | 13,800 |
| 5 | 1.1 | **RAD Elicitation** |  | 16d | 2023-10-23 A | 2023-11-13 A |  | 100% | 2023-11-13 | 31h | 31h | 9,000 | 7,800 | 9,000 |
| 6 | 1.1.1 | Introduzione RAD | manual | 0.12d | 2023-10-23 A | 2023-10-30 A |  | 100% | 2023-10-30 | 1h | 1h | 300 | 300 | 300 |
| 7 | 1.1.2 | Sistema corrente | manual | 0.38d | 2023-10-23 A | 2023-10-30 A |  | 100% | 2023-10-30 | 3h | 3h | 900 | 900 | 900 |
| 8 | 1.1.3 | Requisiti funzionali | manual | 1d | 2023-10-30 A | 2023-11-07 A |  | 100% | 2023-11-06 | 8h | 8h | 2,400 | 1,800 | 2,400 |
| 9 | 1.1.4 | Scenari | manual | 0.75d | 2023-10-30 A | 2023-11-07 A |  | 100% | 2023-11-06 | 6h | 6h | 1,500 | 900 | 1,500 |
| 10 | 1.1.5 | Use Case Diagram | manual | 6d | 2023-11-06 A | 2023-11-13 A | 9 | 100% | 2023-11-13 | 2h | 2h | 600 | 600 | 600 |
| 11 | 1.1.6 | Use Case | manual | 6d | 2023-11-06 A | 2023-11-13 A | 10 | 100% | 2023-11-13 | 5h | 5h | 1,500 | 1,500 | 1,500 |
| 12 | 1.1.7 | Requisiti non funzionali | manual | 6d | 2023-11-06 A | 2023-11-13 A | 9 | 100% | 2023-11-13 | 6h | 6h | 1,800 | 1,800 | 1,800 |
| 13 | 1.2 | **RAD Model** |  | 11d | 2023-11-13 A | 2023-11-27 A | 5 | 100% | 2023-11-27 | 16h | 16h | 4,800 | 4,800 | 4,800 |
| 14 | 1.2.1 | Class Diagram e Tabelle a oggetti | manual | 6d | 2023-11-20 A | 2023-11-27 A |  | 100% | 2023-11-27 | 4h | 4h | 1,200 | 1,200 | 1,200 |
| 15 | 1.2.2 | Sequence Diagram | manual | 6d | 2023-11-13 A | 2023-11-20 A | 14 | 100% | 2023-11-20 | 4h | 4h | 1,200 | 1,200 | 1,200 |
| 16 | 1.2.3 | Activity e Statechart Diagram | manual | 6d | 2023-11-13 A | 2023-11-20 A | 14 | 100% | 2023-11-20 | 3h | 3h | 900 | 900 | 900 |
| 17 | 1.2.4 | Mockup | manual | 11d | 2023-11-13 A | 2023-11-27 A | 15 | 100% | 2023-11-27 | 2h | 2h | 600 | 600 | 600 |
| 18 | 1.2.5 | Navigation Path | manual | 11d | 2023-11-13 A | 2023-11-27 A | 15 | 100% | 2023-11-27 | 3h | 3h | 900 | 900 | 900 |
| 19 | 2 | **SDD** |  | 6d | 2023-11-27 A | 2023-12-04 A | 4 | 100% | 2023-12-04 | 30h | 30h | 9,000 | 9,000 | 9,000 |
| 20 | 2.1 | **Introduzione** |  | 4d | 2023-11-27 A | 2023-11-30 A |  | 100% | 2023-11-30 | 6h | 6h | 1,800 | 1,800 | 1,800 |
| 21 | 2.1.1 | Design Goals | manual | 4d | 2023-11-27 A | 2023-11-30 A | 12 | 100% | 2023-11-30 | 3h | 3h | 900 | 900 | 900 |
| 22 | 2.1.2 | Trade-Offs | manual | 4d | 2023-11-27 A | 2023-11-30 A | 21 | 100% | 2023-11-30 | 3h | 3h | 900 | 900 | 900 |
| 23 | 2.2 | Architettura Sistema Corrente | manual | 4d | 2023-11-27 A | 2023-11-30 A |  | 100% | 2023-11-30 | 2h | 2h | 600 | 600 | 600 |
| 24 | 2.3 | **Architettura Sistema Proposto** |  | 6d | 2023-11-27 A | 2023-12-04 A |  | 100% | 2023-12-04 | 22h | 22h | 6,600 | 6,600 | 6,600 |
| 25 | 2.3.1 | Decomposizione in Sottosistemi | manual | 4d | 2023-11-27 A | 2023-11-30 A |  | 100% | 2023-11-30 | 3h | 3h | 900 | 900 | 900 |
| 26 | 2.3.2 | Mapping hardware/software | manual | 3d | 2023-11-30 A | 2023-12-04 A | 25 | 100% | 2023-12-04 | 3h | 3h | 900 | 900 | 900 |
| 27 | 2.3.3 | Gestione Dati persistenti | manual | 3d | 2023-11-30 A | 2023-12-04 A |  | 100% | 2023-12-04 | 4h | 4h | 1,200 | 1,200 | 1,200 |
| 28 | 2.3.4 | Controllo Accessi e sicurezza | manual | 3d | 2023-11-30 A | 2023-12-04 A |  | 100% | 2023-12-04 | 3h | 3h | 900 | 900 | 900 |
| 29 | 2.3.5 | Controllo flusso globale | manual | 3d | 2023-11-30 A | 2023-12-04 A | 28 | 100% | 2023-12-04 | 3h | 3h | 900 | 900 | 900 |
| 30 | 2.3.6 | Boundary conditions | manual | 3d | 2023-11-30 A | 2023-12-04 A |  | 100% | 2023-12-04 | 3h | 3h | 900 | 900 | 900 |
| 31 | 2.3.7 | Servizi dei sottosistemi | manual | 3d | 2023-11-30 A | 2023-12-04 A |  | 100% | 2023-12-04 | 3h | 3h | 900 | 900 | 900 |

| ID | WBS | Task | Type | Duration | Start | Finish | Predecessors | Complete | Baseline finish | Work | Actual work | Cost | Baseline cost | Actual cost |
| --- | --- | --- | --- | --- | --- | --- | --- | --- | --- | --- | --- | --- | --- | --- |
| 32 | 3 | **Test Case Specification** |  | 6d | 2023-12-04 A | 2023-12-11 A | 19 | 100% | 2023-12-11 | 12h | 12h | 3,600 | 3,600 | 3,600 |
| 33 | 3.1 | Test Plan & TCS | manual | 6d | 2023-12-04 A | 2023-12-11 A |  | 100% | 2023-12-11 | 12h | 12h | 3,600 | 3,600 | 3,600 |
| 34 | 4 | **ODD** |  | 10d | 2023-12-11 A | 2023-12-22 A | 32 | 100% | 2023-12-22 | 24h | 24h | 7,200 | 7,200 | 7,200 |
| 35 | 4.1 | Introduzione | manual | 8d | 2023-12-11 A | 2023-12-20 A |  | 100% | 2023-12-20 | 4h | 4h | 1,200 | 1,200 | 1,200 |
| 36 | 4.2 | Packages | manual | 8d | 2023-12-11 A | 2023-12-20 A |  | 100% | 2023-12-20 | 5h | 5h | 1,500 | 1,500 | 1,500 |
| 37 | 4.3 | Class Interfaces | manual | 8d | 2023-12-11 A | 2023-12-20 A |  | 100% | 2023-12-20 | 5h | 5h | 1,500 | 1,500 | 1,500 |
| 38 | 4.4 | Design Patterns | manual | 3d | 2023-12-20 A | 2023-12-22 A |  | 100% | 2023-12-22 | 10h | 10h | 3,000 | 3,000 | 3,000 |
| 39 | 5 | **Implementazione** |  | 16d | 2023-12-27 A | 2024-01-17 A | 34 | 100% | 2024-01-17 | 135h | 135h | 40,500 | 43,200 | 40,500 |
| 40 | 5.1 | Setup | manual | 2d | 2023-12-27 A | 2023-12-28 A |  | 100% | 2023-12-28 | 24h | 24h | 7,200 | 7,200 | 7,200 |
| 41 | 5.2 | Data Layer | manual | 16d | 2023-12-27 A | 2024-01-17 A | 40 | 100% | 2024-01-17 | 36h | 36h | 10,800 | 10,800 | 10,800 |
| 42 | 5.3 | Application Layer | manual | 15d | 2023-12-27 A | 2024-01-16 A | 40 | 100% | 2024-01-17 | 45h | 45h | 13,500 | 14,400 | 13,500 |
| 43 | 5.4 | Presentation Layer | manual | 13.33d | 2023-12-27 A | 2024-01-15 A | 40 | 100% | 2024-01-17 | 30h | 30h | 9,000 | 10,800 | 9,000 |
| 44 | 6 | **Testing** |  | 12d | 2024-01-02 A | 2024-01-17 A | 39 | 100% | 2024-01-17 | 40h | 40h | 12,000 | 12,600 | 12,000 |
| 45 | 6.1 | Unit Testing & Integration Testing | manual | 10.67d | 2024-01-02 A | 2024-01-16 A | 41, 42 | 100% | 2024-01-17 | 16h | 16h | 4,800 | 5,400 | 4,800 |
| 46 | 6.2 | System testing | manual | 12d | 2024-01-02 A | 2024-01-17 A | 43 | 100% | 2024-01-17 | 16h | 16h | 4,800 | 4,800 | 4,800 |
| 47 | 6.3 | Test Report | manual | 12d | 2024-01-02 A | 2024-01-17 A |  | 100% | 2024-01-17 | 8h | 8h | 2,400 | 2,400 | 2,400 |
| 48 | 7 | **Manuali** |  | 3d | 2024-01-18 A | 2024-01-20 A | 39 | 100% | 2024-01-20 | 5h | 5h | 1,500 | 1,500 | 1,500 |
| 49 | 7.1 | Manuale Utente | manual | 3d | 2024-01-18 A | 2024-01-20 A |  | 100% | 2024-01-20 | 2h | 2h | 600 | 600 | 600 |
| 50 | 7.2 | Manuale Installazione | manual | 3d | 2024-01-18 A | 2024-01-20 A |  | 100% | 2024-01-20 | 3h | 3h | 900 | 900 | 900 |
